# 20180719项目进度计划

Schedule from MS Project, 2018-07-18 to 2018-08-25, costs in ¥, A marks actual dates.
Microsoft

## Calendars

- 标准: Mon-Fri 08:00-12:00, 13:00-17:00; Sat-Sun off. Exceptions (off unless hours are given): 2018-07-28 08:00-12:00, 13:00-17:00, 2018-08-04 08:00-12:00, 13:00-17:00.

## Resources

| Resource | Rate |
| --- | --- |
| ·吕浩泰 | 48 |
| 张丹萍 | 41 |
| 吴梓铭 | 33 |
| 陈树沛 | 34 |
| 陈凯平 | 42 |

## Schedule

| ID | WBS | Task | Type | Duration | Start | Finish | Predecessors | Complete | Remaining | Total slack | Resources | Work | Actual work | Cost | Actual cost |
| --- | --- | --- | --- | --- | --- | --- | --- | --- | --- | --- | --- | --- | --- | --- | --- |
| 1 | 1 | **先启阶段** |  | 10d | 2018-07-18 A | 2018-07-29 |  | 27% | 7.31d |  |  | 242.01h | 53.61h | 9,786.25 | 2,181.45 |
| 2 | 1.1 | 获取项目需求 | manual | 0.33d | 2018-07-18 A | 2018-07-18 A |  | 100% |  |  | ·吕浩泰 [33%] | 0.87h | 0.87h | 41.82 | 41.82 |
| 3 | 1.2 | 估计项目开发规模、成本、周期 | manual | 0.33d | 2018-07-18 A | 2018-07-18 A | 2 | 100% |  |  | ·吕浩泰 [33%] | 0.87h | 0.87h | 41.82 | 41.82 |
| 4 | 1.3 | 项目立项 | manual | 0.33d | 2018-07-18 A | 2018-07-18 A | 3 | 100% |  |  | ·吕浩泰 [33%] | 0.87h | 0.87h | 41.82 | 41.82 |
| 5 | 1.4 | **编制软件开发计划** |  | 2d | 2018-07-19 A | 2018-07-20 | 4 | 86% | 0.29d |  |  | 30h | 21h | 1,284 | 936 |
| 6 | 1.4.1 | 编制《项目开发计划》 | manual | 0.5d | 2018-07-19 A | 2018-07-19 A |  | 100% |  |  | ·吕浩泰 [50%] | 3.5h | 3.5h | 168 | 168 |
| 7 | 1.4.2 | 编制《项目进度计划》 | manual | 0.5d | 2018-07-19 A | 2018-07-19 A | 6 | 100% |  |  | ·吕浩泰 [50%] | 3.5h | 3.5h | 168 | 168 |
| 8 | 1.4.3 | 编制《风险管理计划》 | manual | 0.5d | 2018-07-20 A | 2018-07-20 A |  | 100% |  |  | ·吕浩泰 [25%] | 2h | 2h | 96 | 96 |
| 9 | 1.4.4 | 建立配置库，编制《配置管理计划》 | manual | 1.5d | 2018-07-19 A | 2018-07-20 A |  | 100% |  |  | 陈凯平 | 12h | 12h | 504 | 504 |
| 10 | 1.4.5 | 同行评审 | manual | 0.5d | 2018-07-20 | 2018-07-20 | 6, 7, 14, 9, 8 |  |  |  | ·吕浩泰 [25%]; 陈凯平 [50%]; 陈树沛 [50%]; 吴梓铭 [50%]; 张丹萍 [50%] | 9h |  | 348 |  |
| 11 | 1.5 | **需求分析** |  | 6.5d | 2018-07-19 A | 2018-07-27 |  | 21% | 5.16d | 0d |  | 189h | 30h | 7,448 | 1,120 |
| 12 | 1.5.1 | 获取业务需求 | manual | 0.2d | 2018-07-19 A | 2018-07-19 A |  | 100% |  |  | 张丹萍 [50%] | 1.6h | 1.6h | 65.6 | 65.6 |
| 13 | 1.5.2 | 定义业务需求，编制《软件需求规约》 | manual | 0.8d | 2018-07-19 A | 2018-07-19 A | 12 | 100% |  |  | 张丹萍 [50%] | 6.4h | 6.4h | 262.4 | 262.4 |
| 14 | 1.5.3 | 编制《软件测试计划》 | manual | 1.5d | 2018-07-19 A | 2018-07-20 A |  | 100% |  |  | 吴梓铭 | 12h | 12h | 396 | 396 |
| 15 | 1.5.4 | 同行评审 | manual | 0.5d | 2018-07-20 A | 2018-07-20 A | 13 | 100% |  |  | ·吕浩泰 [25%]; 陈凯平 [50%]; 陈树沛 [50%]; 吴梓铭 [50%]; 张丹萍 [50%] | 10h | 10h | 396 | 396 |
| 16 | 1.5.5 | **界面原型开发** |  | 4d | 2018-07-23 | 2018-07-26 |  |  |  | 0d |  | 42h |  | 1,820 |  |
| 17 | 1.5.5.1 | 设计原型图 | manual | 3.5d | 2018-07-23 | 2018-07-26 |  |  |  |  | ·吕浩泰 [50%]; 张丹萍 [50%] | 28h |  | 1,246 |  |
| 18 | 1.5.5.2 | 形成交互原型文档 | manual | 0.25d | 2018-07-26 | 2018-07-26 | 17 |  |  |  | ·吕浩泰; 张丹萍 | 4h |  | 178 |  |
| 19 | 1.5.5.3 | 同行评审 | manual | 0.25d | 2018-07-26 | 2018-07-26 | 18 |  |  |  | ·吕浩泰; 陈凯平; 陈树沛; 吴梓铭; 张丹萍 | 10h |  | 396 |  |
| 20 | 1.5.6 | **需求开发** |  | 5.5d | 2018-07-20 | 2018-07-27 |  |  |  | 0d |  | 117h |  | 4,508 |  |
| 21 | 1.5.6.1 | 编制《前景文档》 | manual | 0.5d | 2018-07-20 | 2018-07-20 |  |  |  |  | ·吕浩泰 [25%] | 1h |  | 48 |  |
| 22 | 1.5.6.2 | 编制《词汇表》 | manual | 0.5d | 2018-07-20 | 2018-07-20 |  |  |  |  | 张丹萍 | 4h |  | 164 |  |
| 23 | 1.5.6.3 | 绘制用况图，编制《软件实现规约》 | manual | 3d | 2018-07-23 | 2018-07-25 |  |  |  |  | ·吕浩泰 [50%]; 陈凯平; 陈树沛; 吴梓铭 [50%]; 张丹萍 [50%] | 84h |  | 3,288 |  |
| 24 | 1.5.6.4 | 设计验收测试用例 | manual | 3d | 2018-07-23 | 2018-07-25 |  |  |  |  | 吴梓铭 [50%] | 12h |  | 396 |  |
| 25 | 1.5.6.5 | 阶段评审 | manual | 0.5d | 2018-07-27 | 2018-07-27 | 23, 10, 15, 19 |  |  |  | ·吕浩泰 [50%]; 陈凯平 [50%]; 陈树沛; 吴梓铭; 张丹萍 | 16h |  | 612 |  |

| ID | WBS | Task | Type | Duration | Start | Finish | Predecessors | Total slack | Resources | Work | Cost |
| --- | --- | --- | --- | --- | --- | --- | --- | --- | --- | --- | --- |
| 26 | 1.6 | **更新软件开发计划** |  | 2d | 2018-07-27 | 2018-07-28 |  | 0d |  | 20.4h | 928.8 |
| 27 | 1.6.1 | 更新《项目开发计划》 | manual | 2d | 2018-07-27 | 2018-07-28 |  |  | ·吕浩泰 [25%] | 4h | 192 |
| 28 | 1.6.2 | 更新《项目进度计划》 | manual | 2d | 2018-07-27 | 2018-07-28 |  |  | ·吕浩泰 [50%] | 8h | 384 |
| 29 | 1.6.3 | 更新《项目配置管理计划》 | manual | 2d | 2018-07-27 | 2018-07-28 |  |  | 陈凯平 [50%] | 8h | 336 |
| 30 | 1.6.4 | 部署基线 | manual | 1d | 2018-07-28 | 2018-07-28 | 27, 28, 29 |  | 陈凯平 [5%] | 0.4h | 16.8 |
| 31 | 2 | **精化阶段** |  | 7d | 2018-07-30 | 2018-08-05 | 1 |  |  |  |  |
| 32 | 2.1 | **详细设计** |  | 1d | 2018-07-19 | 2018-07-19 |  | 0d |  |  |  |
| 33 | 2.1.1 | 设计模型 | manual | 1d? | 2018-07-19 | 2018-07-19 |  |  |  |  |  |
| 34 | 2.1.2 | 集成设计用例 | manual | 1d? | 2018-07-19 | 2018-07-19 |  |  |  |  |  |
| 35 | 2.1.3 | 编制《详细设计说明书》 | manual | 1d? | 2018-07-19 | 2018-07-19 |  |  |  |  |  |
| 36 | 2.2 | **数据库设计** |  | 1d | 2018-07-19 | 2018-07-19 |  | 0d |  |  |  |
| 37 | 2.2.1 | **数据库建模** |  | 1d | 2018-07-19 | 2018-07-19 |  | 0d |  |  |  |
| 38 | 2.2.1.1 | CDM | manual | 1d? | 2018-07-19 | 2018-07-19 |  |  |  |  |  |
| 39 | 2.2.1.2 | PDM | manual | 1d? | 2018-07-19 | 2018-07-19 |  |  |  |  |  |
| 40 | 2.2.1.3 | SQL脚本文件 | manual | 1d? | 2018-07-19 | 2018-07-19 |  |  |  |  |  |
| 41 | 2.2.2 | 编制《数据库设计说明书》 | manual | 1d? | 2018-07-19 | 2018-07-19 |  |  |  |  |  |
| 42 | 2.3 | 编制《系统构架设计说明书》 | manual | 1d? | 2018-07-30 | 2018-07-30 |  |  |  |  |  |
| 43 | 2.4 | 同行评审 | manual | 1d? | 2018-07-30 | 2018-07-30 |  |  |  |  |  |
| 44 | 3 | **构建阶段** |  | 11d | 2018-08-06 | 2018-08-19 | 31 |  |  |  |  |
| 45 | 3.1 | 前端编码 | manual | 1d? | 2018-08-06 | 2018-08-06 |  |  |  |  |  |
| 46 | 3.2 | 后端编码 | manual | 1d? | 2018-08-06 | 2018-08-06 |  |  |  |  |  |
| 47 | 3.3 | 单元测试 | manual | 1d? | 2018-08-06 | 2018-08-06 |  |  |  |  |  |
| 48 | 3.4 | 集成测试 | manual | 1d? | 2018-08-06 | 2018-08-06 |  |  |  |  |  |
| 49 | 4 | **产品化阶段** |  | 3d | 2018-08-20 | 2018-08-22 | 44 |  |  |  |  |
| 50 | 4.1 | 部署准备 | manual | 1d? | 2018-08-20 | 2018-08-20 |  |  |  |  |  |
| 51 | 4.2 | 环境准备 | manual | 1d? | 2018-08-20 | 2018-08-20 |  |  |  |  |  |
| 52 | 4.3 | 验收测试 | manual | 1d? | 2018-08-20 | 2018-08-20 |  |  |  |  |  |

| ID | WBS | Task | Type | Duration | Start | Finish | Total slack |
| --- | --- | --- | --- | --- | --- | --- | --- |
| 53 | 5 | **项目管理** |  | 28d | 2018-07-19 | 2018-08-23 |  |
| 54 | 5.1 | 项目进度控制 | manual | 1d? | 2018-07-19 | 2018-07-19 |  |
| 55 | 5.2 | 风险控制 | manual | 1d? | 2018-07-19 | 2018-07-19 |  |
| 56 | 6 | **配置管理** |  | 28d | 2018-07-19 | 2018-08-23 |  |
| 57 | 6.1 | 配置库更新 | manual | 3d | 2018-07-19 | 2018-07-23 |  |
| 58 | 6.2 | **第一次项目交接** |  | 1d | 2018-07-28 | 2018-07-28 |  |
| 59 | 6.2.1 | 更新配置库 | manual | 1d? | 2018-07-28 | 2018-07-28 |  |
| 60 | 6.2.2 | 状态审计 | manual | 1d? | 2018-07-28 | 2018-07-28 |  |
| 61 | 6.2.3 | 更新基线状态 | manual | 1d? | 2018-07-28 | 2018-07-28 |  |
| 62 | 6.3 | **第二次项目交接** |  | 1d | 2018-08-04 | 2018-08-04 |  |
| 63 | 6.3.1 | 更新配置库 | manual | 1d? | 2018-08-04 | 2018-08-04 |  |
| 64 | 6.3.2 | 状态审计 | manual | 1d? | 2018-08-04 | 2018-08-04 |  |
| 65 | 6.3.3 | 更新基线状态 | manual | 1d? | 2018-08-04 | 2018-08-04 |  |
| 66 | 7 | **每周例会** |  | 27d | 2018-07-21 | 2018-08-25 | 0d |
| 67 | 7.1 | 第一次每周例会 | manual | 1d | 2018-07-21 | 2018-07-21 |  |
| 68 | 7.2 | 第二次每周例会 | manual | 1d | 2018-07-28 | 2018-07-28 |  |
| 69 | 7.3 | 第三次每周例会 | manual | 1d | 2018-08-04 | 2018-08-04 |  |
| 70 | 7.4 | 第四次每周例会 | manual | 1d | 2018-08-11 | 2018-08-11 |  |
| 71 | 7.5 | 第五次每周例会 | manual | 1d | 2018-08-18 | 2018-08-18 |  |
| 72 | 7.6 | 第六次每周例会 | manual | 1d | 2018-08-25 | 2018-08-25 |  |
